# Example Design Project

Schedule from MS Project, 2013-10-14 to 2013-12-24, A marks actual dates.

## Calendars

- Standard: Mon-Fri 08:00-12:00, 13:00-17:00; Sat-Sun off.

## Resources

| Resource |
| --- |
| Ben |
| Michael |
| Cody |
| John |

## Schedule

| ID | WBS | Task | Duration | Start | Finish | Predecessors | Complete | Remaining | Total slack | Free slack | Constraint | Resources | Work | Actual work |
| --- | --- | --- | --- | --- | --- | --- | --- | --- | --- | --- | --- | --- | --- | --- |
| 1 | 1 | **Project Initiation** | 9d | 2013-10-14 A | 2013-10-24 A |  | 100% |  |  |  |  |  | 264h | 264h |
| 2 | 1.1 | Initial Design | 8d | 2013-10-14 A | 2013-10-23 A |  | 100% |  |  |  | start no earlier than 2013-10-14 | Ben; Cody; John; Michael | 256h | 256h |
| 3 | 1.2 | Prototype Parts Purchase | 1d | 2013-10-24 A | 2013-10-24 A | 2 | 100% |  |  |  |  | Cody | 8h | 8h |
| 4 | 2 | **Schematic/Layout** | 18d | 2013-10-24 A | 2013-11-18 |  | 61% | 7d | 4d |  |  |  | 328h | 224h |
| 5 | 2.1 | Create Schematic Checklist | 3d | 2013-10-24 A | 2013-10-28 A | 2 | 100% |  |  |  |  | Ben; Cody; John; Michael | 96h | 96h |
| 6 | 2.2 | Schematic | 8d | 2013-10-29 A | 2013-11-07 A | 5 | 100% |  |  |  |  | Cody; John | 128h | 128h |
| 7 | 2.3 | Layout | 6d | 2013-11-08 | 2013-11-15 | 6 |  |  | 4d | 0d |  | Cody; John | 96h |  |
| 8 | 2.4 | Sent board design to OSH Park | 1d | 2013-11-18 | 2013-11-18 | 7 |  |  | 4d | 0d | start no earlier than 2013-11-18 | Cody | 8h |  |
| 9 | 3 | **Programming the LCD** | 26d | 2013-10-24 A | 2013-11-28 |  | 35% | 16.82d | 0d |  |  |  | 272h | 96h |
| 10 | 3.1 | Research/Read Data Sheets | 8d | 2013-10-24 A | 2013-11-04 | 2 | 75% | 2d | 2d | 0d |  | Ben | 64h | 48h |
| 11 | 3.2 | Create Image Library | 8d | 2013-10-24 A | 2013-11-04 | 2 | 50% | 4d | 8d |  |  | Ben | 64h | 32h |
| 12 | 3.3 | Develop SPI Library | 8d | 2013-11-05 A | 2013-11-14 | 10 | 25% | 6d | 0d |  |  | Ben | 64h | 16h |
| 13 | 3.4 | Develop Nokia 5110 Library | 10d | 2013-11-15 | 2013-11-28 | 12, 11 |  |  | 0d |  |  | Ben | 80h |  |
| 14 | 4 | **Programming the Magnetometer** | 26d | 2013-10-24 A | 2013-11-28 |  | 90% | 2.5d | 0d |  |  |  | 208h | 188h |
| 15 | 4.1 | Research/Read Data Sheets | 8d | 2013-10-24 A | 2013-11-04 A | 2 | 100% |  |  |  |  | Michael | 64h | 64h |
| 16 | 4.2 | Develop TWI Library | 8d | 2013-11-05 A | 2013-11-14 A | 15 | 100% |  |  |  |  | Michael | 64h | 64h |
| 17 | 4.3 | Develop LSM303 Library | 10d | 2013-11-15 A | 2013-11-28 | 16 | 75% | 2.5d | 0d |  |  | Michael | 80h | 60h |
| 18 | 5 | **Prototyping** | 13d | 2013-11-19 | 2013-12-05 |  |  |  | 0d |  |  |  | 264h |  |
| 19 | 5.1 | Parts Order | 1d | 2013-11-19 | 2013-11-19 | 8 |  |  | 4d | 0d |  | Cody | 8h |  |
| 20 | 5.2 | Construct Board | 3d | 2013-11-20 | 2013-11-22 | 19, 8 |  |  | 4d |  |  | Ben; Michael; Cody; John | 96h |  |
| 21 | 5.3 | Test Prototype | 5d | 2013-11-29 | 2013-12-05 | 20, 9, 14 |  |  | 0d |  |  | Michael; Ben; Cody; John | 160h |  |
| 22 | 6 | **Build and Test** | 13d | 2013-12-06 | 2013-12-24 |  |  |  | 0d |  |  |  | 416h |  |
| 23 | 6.1 | Construct Boards | 3d | 2013-12-06 | 2013-12-10 | 21 |  |  | 0d |  |  | John; Ben; Cody; Michael | 96h |  |
| 24 | 6.2 | Test Boards | 5d | 2013-12-11 | 2013-12-17 | 23 |  |  | 0d |  |  | Ben; Michael; Cody; John | 160h |  |
| 25 | 6.3 | Documentation/Presentation | 5d | 2013-12-18 | 2013-12-24 | 24 |  |  | 0d |  |  | John; Ben; Cody; Michael | 160h |  |
